# FF

How a schedule from MS Project changed from version to version. A marks actual dates.

## Version 1 (saved 2020-10-24)

Note of the change: Resources Schedule 22

| ID | WBS | Task | Duration | Start | Finish | Predecessors | Total float |
| --- | --- | --- | --- | --- | --- | --- | --- |
| 1 | 1 | **Construction of Flood Fuse** | 63d | 2020-12-15 | 2021-02-23 |  | 0d |
| 2 |  | Mobilization and Site Preparation | 7d | 2020-12-15 | 2020-12-22 |  | 0d |
| 3 | 1.2 | **Manufacturing CC Block** | 15d | 2020-12-22 | 2021-01-08 |  | 0d |
| 4 |  | CC Block Manufacture(50X50X50)-1355 Nos | 15d | 2020-12-22 | 2021-01-08 | 2 | 7d |
| 5 |  | CC Block Manufacture(50X50X30)-4795 Nos | 15d | 2020-12-22 | 2021-01-08 | 2 | 0d |
| 6 |  | CC Block Manufacture(40X40X40)-1782 Nos | 15d | 2020-12-22 | 2021-01-08 | 2 | 0d |
| 7 |  | CC Block Manufacture(40X40X40)-3917 Nos | 15d | 2020-12-22 | 2021-01-08 | 2 | 0d |
| 8 |  | Ring Bundh construction -1482 cum | 7d | 2020-12-22 | 2020-12-30 | 2 | 45d |
| 9 |  | Excavation-1123 cum | 4d | 2020-12-30 | 2021-01-04 | 8 | 45d |
| 10 |  | Embankment Construction-669 cum | 4d | 2020-12-30 | 2021-01-04 | 8 | 45d |
| 11 |  | Placing Sand Filter-242 Cum | 7d | 2021-01-08 | 2021-01-15 | 4 | 7d |
| 12 |  | Placing Geotextile Filter-1668 sqm | 7d | 2021-01-16 | 2021-01-23 | 11 | 7d |
| 13 |  | Placing Pea Gravel Filter-322 cum | 7d | 2021-01-23 | 2021-02-01 | 12 | 7d |
| 14 |  | Placing CC Block-578 cum | 7d | 2021-02-09 | 2021-02-16 | 13, 7FS+28d, 6FS+28d, 4, 5FS+28d | 0d |
| 15 |  | Ring Bundh Removal | 3d | 2021-02-16 | 2021-02-19 | 14 | 0d |
| 16 |  | Ancilary Work for Site Completion | 3d | 2021-02-19 | 2021-02-23 | 15 | 0d |

## Version 2 (saved 2020-11-05)

Note of the change: Specification 56

Last finish stays 2021-02-23.

Changed:

| ID | Task | Other |
| --- | --- | --- |
| 1 | **Construction of 15M Flood Fuse at 35050M** | was named Construction of Flood Fuse |
