# FF

How a schedule from MS Project changed from version to version. A marks actual dates.

## Version 1 (saved 2020-11-01)

Note of the change: Resources Schedule 22

| ID | WBS | Task | Duration | Start | Finish | Predecessors | Total float |
| --- | --- | --- | --- | --- | --- | --- | --- |
| 1 | 1 | **Construction of Flood Fuse** | 63d | 2020-12-15 | 2021-02-23 |  | 0d |
| 2 |  | Mobilization and Site Preparation | 7d | 2020-12-15 | 2020-12-22 |  | 0d |
| 3 | 1.2 | **Manufacturing CC Block** | 15d | 2020-12-22 | 2021-01-08 |  | 0d |
| 4 |  | CC Block Manufacture(50X50X50)-2669Nos | 15d | 2020-12-22 | 2021-01-08 | 2 | 7d |
| 5 |  | CC Block Manufacture(50X50X30)-4795Nos | 15d | 2020-12-22 | 2021-01-08 | 2 | 0d |
| 6 |  | CC Block Manufacture(40X40X40)-3653Nos | 15d | 2020-12-22 | 2021-01-08 | 2 | 0d |
| 7 |  | CC Block Manufacture(40X40X40)-2555 | 15d | 2020-12-22 | 2021-01-08 | 2 | 0d |
| 8 |  | Ring Bundh construction 2052 cum | 4d | 2020-12-22 | 2020-12-26 | 2 | 47d |
| 9 |  | Excavation 2525 cum | 5d | 2020-12-26 | 2021-01-01 | 8 | 47d |
| 10 |  | Embankment Construction 1711cum | 3d | 2020-12-26 | 2020-12-30 | 8 | 49d |
| 11 |  | Placing Sand Filter 361 cum | 7d | 2021-01-08 | 2021-01-15 | 4 | 7d |
| 12 |  | Placing Geotextile Filter 2457 sqm | 7d | 2021-01-16 | 2021-01-23 | 11 | 7d |
| 13 |  | Placing Pea Gravel Filter 481 cum | 7d | 2021-01-23 | 2021-02-01 | 12 | 7d |
| 14 |  | Placing CC Block 504 cum | 7d | 2021-02-09 | 2021-02-16 | 13, 7FS+28d, 6FS+28d, 4, 5FS+28d | 0d |
| 15 |  | Ring Bundh Removal | 3d | 2021-02-16 | 2021-02-19 | 14 | 0d |
| 16 |  | Ancilary Work for Site Completion | 3d | 2021-02-19 | 2021-02-23 | 15 | 0d |

## Version 2 (saved 2020-11-05)

Note of the change: Specification 56

Last finish stays 2021-02-23.

Changed:

| ID | Task | Other |
| --- | --- | --- |
| 1 | **Construction of 30M Flood Fuse at 1000M** | was named Construction of Flood Fuse |
