# FF

How a schedule from MS Project changed from version to version. A marks actual dates.

## Version 1 (saved 2020-11-02)

Note of the change: Resources Schedule 8

| ID | WBS | Task | Duration | Start | Finish | Predecessors | Total float |
| --- | --- | --- | --- | --- | --- | --- | --- |
| 1 | 1 | **TYPE_A 724 to 935 total 211 meter** | 68d | 2020-12-15 | 2021-03-01 |  | 0d |
| 2 |  | Mobilization and Site Preparation | 7d | 2020-12-15 | 2020-12-22 |  | 0d |
| 3 | 1.2 | **Manufacturing CC Block** | 16d | 2020-12-22 | 2021-01-09 |  | 0d |
| 4 |  | CC Block Manufacture(40X40X40)-5012 Nos | 16d | 2020-12-22 | 2021-01-09 | 2 | 0d |
| 5 |  | CC Block Manufacture(40X40X20)-33338 Nos | 16d | 2020-12-22 | 2021-01-09 | 2 | 0d |
| 6 |  | Embankment Construction-6974 cum | 7d | 2020-12-22 | 2020-12-30 | 2 | 7d |
| 7 |  | Placing Sand Filter-560 cum | 10d | 2020-12-30 | 2021-01-10 | 6 | 7d |
| 8 |  | Placing Geotextile Filter-6098 sqm | 10d | 2021-01-11 | 2021-01-21 | 7 | 7d |
| 9 |  | Placing Pea Gravel Filter-560 cum | 10d | 2021-01-21 | 2021-02-02 | 8 | 7d |
| 10 |  | Placing CC Block-1388 cum/38350 Nos | 10d | 2021-02-10 | 2021-02-20 | 9, 4FS+28d, 5FS+28d | 0d |
| 11 |  | Ancilary Work for Site Completion-1 LS | 7d | 2021-02-20 | 2021-03-01 | 10 | 0d |

## Version 2 (saved 2020-11-05)

Note of the change: Specification 56

Last finish stays 2021-03-01.

Changed:

| ID | Task | Other |
| --- | --- | --- |
| 1 | **TYPE_A _50M 965 to 1015** | was named TYPE_A 724 to 935 total 211 meter |
