# FF

How a schedule from MS Project changed from version to version. A marks actual dates.

## Version 1 (saved 2020-11-02)

Note of the change: Resources Schedule 22

| ID | WBS | Task | Duration | Start | Finish | Predecessors | Total float |
| --- | --- | --- | --- | --- | --- | --- | --- |
| 1 | 1 | **TYPE_B_5 0 to 724 total 724 meter** | 64d | 2020-12-15 | 2021-02-24 |  | 0d |
| 2 |  | Mobilization and Site Preparation | 7d | 2020-12-15 | 2020-12-22 |  | 0d |
| 3 |  | Embankment Construction 3495 cum | 30d | 2020-12-22 | 2021-01-25 | 2 | 0d |
| 4 |  | Geotextile Filter 11251 sqm | 10d | 2021-01-25 | 2021-02-05 | 3 | 17d |
| 5 |  | Geo_Bags 3388 sqm | 10d | 2021-01-25 | 2021-02-05 | 3 | 0d |
| 6 |  | Turfing 9842 sqm | 10d | 2021-02-05 | 2021-02-16 | 5 | 0d |
| 7 |  | Ancilary Work for Site Completion-1 LS | 7d | 2021-02-16 | 2021-02-24 | 6 | 0d |

## Version 2 (saved 2020-11-05)

Note of the change: Specification 56

Last finish stays 2021-02-24.

Changed:

| ID | Task | Other |
| --- | --- | --- |
| 1 | **TYPE_B_5 1166M_1015_TO_2180** | was named TYPE_B_5 0 to 724 total 724 meter |
