How a schedule from MS Project changed from version to version. A marks actual dates.

## Version 1 (saved 2020-09-30)

Note of the change: Spec for Tenders

| ID | Task | Duration | Start | Finish | Predecessors | Total float |
| --- | --- | --- | --- | --- | --- | --- |
| 1 | Land Lease | 7d | 2009-11-16 | 2009-11-24 |  | 0d |
| 2 | Labour Shed and Storage Construction | 15d | 2009-11-25 | 2009-12-15 | 1 |  |
| 3 | Casting Yard Preparation | 7d | 2009-11-25 | 2009-12-03 | 1 |  |
| 4 | Equipment and Labour Mobilization | 7d | 2009-12-16 | 2009-12-24 | 2 |  |
| 5 | Material Consignment-1 | 4d | 2009-12-16 | 2009-12-21 | 2 |  |
| 6 | CC Block Casting Batch No:1 | 7d | 2009-12-22 | 2009-12-30 | 5 |  |
| 7 | CC Block Casting Batch No:2 | 7d | 2009-12-31 | 2010-01-08 | 6 |  |
| 8 | Material Consignment-2 | 4d | 2009-12-31 | 2010-01-05 | 6 |  |
| 9 | CC Block Casting Batch No:3 | 7d | 2010-01-06 | 2010-01-14 | 8 |  |
| 10 | CC Block Casting Batch No:4 | 7d | 2010-01-15 | 2010-01-25 | 9 |  |
| 11 | Material Consignment-3 | 4d | 2010-01-15 | 2010-01-20 | 9 |  |
| 12 | CC Block Casting Batch No:5 | 7d | 2010-01-21 | 2010-01-29 | 11 |  |
| 13 | CC Block Casting Batch No:6 | 7d | 2010-02-01 | 2010-02-09 | 12 |  |
| 14 | Material Consignment-4 | 4d | 2010-02-01 | 2010-02-04 | 12 |  |
| 15 | CC Block Casting Batch No:7 | 7d | 2010-02-05 | 2010-02-15 | 14 |  |
| 16 | CC Block Casting Batch No:8 | 7d | 2010-02-16 | 2010-02-24 | 15 |  |
| 17 | Material Consignment-5 | 4d | 2010-02-16 | 2010-02-19 | 15 |  |
| 18 | CC Block Casting Batch No:9 | 7d | 2010-02-22 | 2010-03-02 | 17 |  |
| 19 | CC Block Casting Batch No:10 | 7d | 2010-03-03 | 2010-03-11 | 18 |  |
| 20 | Embakment Construction and Slope Prep | 15d | 2010-02-05 | 2010-02-25 | 14 |  |
| 21 | Sand Filter | 10d | 2010-02-26 | 2010-03-11 | 20 |  |
| 22 | Khoa Filter | 10d | 2010-03-12 | 2010-03-25 | 21 |  |
| 23 | Geotextile Filtter | 10d | 2010-03-26 | 2010-04-08 | 22 |  |
| 24 | CC Block Placing | 10d | 2010-04-09 | 2010-04-22 | 23 |  |
| 25 | Demobilization and Site Cleanup | 7d | 2010-04-23 | 2010-05-03 | 24 |  |

## Version 2 (saved 2020-10-13)

Note of the change: Imed Programme Update

Last finish 2010-05-03 → 2010-03-12 (-52d).

Changed:

| ID | Task | Start | Finish | Total float |
| --- | --- | --- | --- | --- |
| 1 | Land Lease |  | 2009-11-24 → 2009-11-22 (-2d) |  |
| 2 | Labour Shed and Storage Construction | 2009-11-25 → 2009-11-22 (-3d) | 2009-12-15 → 2009-12-07 (-8d) | none → 0d |
| 3 | Casting Yard Preparation | 2009-11-25 → 2009-11-22 (-3d) | 2009-12-03 → 2009-11-29 (-4d) | none → 107d |
| 4 | Equipment and Labour Mobilization | 2009-12-16 → 2009-12-07 (-9d) | 2009-12-24 → 2009-12-13 (-11d) | none → 92d |
| 5 | Material Consignment-1 | 2009-12-16 → 2009-12-07 (-9d) | 2009-12-21 → 2009-12-11 (-10d) | none → 0d |
| 6 | CC Block Casting Batch No:1 | 2009-12-22 → 2009-12-11 (-11d) | 2009-12-30 → 2009-12-17 (-13d) | none → 0d |
| 7 | CC Block Casting Batch No:2 | 2009-12-31 → 2009-12-18 (-13d) | 2010-01-08 → 2009-12-24 (-15d) | none → 81d |
| 8 | Material Consignment-2 | 2009-12-31 → 2009-12-18 (-13d) | 2010-01-05 → 2009-12-21 (-15d) | none → 0d |
| 9 | CC Block Casting Batch No:3 | 2010-01-06 → 2009-12-21 (-16d) | 2010-01-14 → 2009-12-28 (-17d) | none → 0d |
| 10 | CC Block Casting Batch No:4 | 2010-01-15 → 2009-12-28 (-18d) | 2010-01-25 → 2010-01-04 (-21d) | none → 70d |
| 11 | Material Consignment-3 | 2010-01-15 → 2009-12-28 (-18d) | 2010-01-20 → 2010-01-01 (-19d) | none → 0d |
| 12 | CC Block Casting Batch No:5 | 2010-01-21 → 2010-01-01 (-20d) | 2010-01-29 → 2010-01-08 (-21d) | none → 0d |
| 13 | CC Block Casting Batch No:6 | 2010-02-01 → 2010-01-08 (-24d) | 2010-02-09 → 2010-01-14 (-26d) | none → 59d |
| 14 | Material Consignment-4 | 2010-02-01 → 2010-01-08 (-24d) | 2010-02-04 → 2010-01-11 (-24d) | none → 0d |
| 15 | CC Block Casting Batch No:7 | 2010-02-05 → 2010-01-12 (-24d) | 2010-02-15 → 2010-01-18 (-28d) | none → 37d |
| 16 | CC Block Casting Batch No:8 | 2010-02-16 → 2010-01-18 (-29d) | 2010-02-24 → 2010-01-25 (-30d) | none → 48d |
| 17 | Material Consignment-5 | 2010-02-16 → 2010-01-18 (-29d) | 2010-02-19 → 2010-01-22 (-28d) | none → 37d |
| 18 | CC Block Casting Batch No:9 | 2010-02-22 → 2010-01-22 (-31d) | 2010-03-02 → 2010-01-29 (-32d) | none → 37d |
| 19 | CC Block Casting Batch No:10 | 2010-03-03 → 2010-01-29 (-33d) | 2010-03-11 → 2010-02-05 (-34d) | none → 37d |
| 20 | Embakment Construction and Slope Prep | 2010-02-05 → 2010-01-12 (-24d) | 2010-02-25 → 2010-01-26 (-30d) | none → 0d |
| 21 | Sand Filter | 2010-02-26 → 2010-01-26 (-31d) | 2010-03-11 → 2010-02-05 (-34d) | none → 0d |
| 22 | Khoa Filter | 2010-03-12 → 2010-02-05 (-35d) | 2010-03-25 → 2010-02-14 (-39d) | none → 0d |
| 23 | Geotextile Filtter | 2010-03-26 → 2010-02-14 (-40d) | 2010-04-08 → 2010-02-24 (-43d) | none → 0d |
| 24 | CC Block Placing | 2010-04-09 → 2010-02-24 (-44d) | 2010-04-22 → 2010-03-06 (-47d) | none → 0d |
| 25 | Demobilization and Site Cleanup | 2010-04-23 → 2010-03-06 (-48d) | 2010-05-03 → 2010-03-12 (-52d) | none → 0d |
