# FF

How a schedule from MS Project changed from version to version. A marks actual dates.

## Version 1 (saved 2020-10-31)

Note of the change: Resources Schedule

| ID | WBS | Task | Duration | Start | Finish | Predecessors | Total float |
| --- | --- | --- | --- | --- | --- | --- | --- |
| 1 | 1 | **TYPE_A 724 to 935 and 955 to 1105 total 261 meter** | 68d | 2020-12-15 | 2021-03-01 |  | 0d |
| 2 |  | Mobilization and Site Preparation | 7d | 2020-12-15 | 2020-12-22 |  | 0d |
| 3 | 1.2 | **Manufacturing CC Block** | 16d | 2020-12-22 | 2021-01-09 |  | 0d |
| 4 |  | CC Block Manufacture(30X30X30)-39933 Nos | 16d | 2020-12-22 | 2021-01-09 | 2 | 0d |
| 5 |  | CC Block Manufacture(40X40X20)-8701 Nos | 16d | 2020-12-22 | 2021-01-09 | 2 | 0d |
| 6 |  | Embankment Construction-9880 cum | 30d | 2020-12-22 | 2021-01-25 | 2 | 21d |
| 7 |  | Placing Sand Filter-601 cum | 10d | 2021-01-25 | 2021-02-05 | 6 | 21d |
| 8 |  | Placing Geotextile Filter-6617 sqm | 10d | 2021-01-25 | 2021-02-05 | 6 | 21d |
| 9 |  | Placing Pea Gravel Filter-620 cum | 10d | 2021-01-09 | 2021-01-20 | 4 | 18d |
| 10 |  | Placing CC Block-1492 cum | 10d | 2021-02-10 | 2021-02-20 | 9, 4FS+28d, 5FS+28d | 0d |
| 11 |  | Ancilary Work for Site Completion-1 LS | 7d | 2021-02-20 | 2021-03-01 | 10 | 0d |

## Version 2 (saved 2020-11-02)

Note of the change: Resources Schedule 8

Last finish 2021-03-01 → 2021-03-18 (+17d).

Changed:

| ID | Task | Start | Finish | Duration | Total float | Predecessors | Other |
| --- | --- | --- | --- | --- | --- | --- | --- |
| 1 | **TYPE_A 724 to 935 and 955 to 1105 total 261 meter** |  | 2021-03-01 → 2021-03-18 (+17d) | 68d → 84d |  |  |  |
| 3 | **Manufacturing CC Block** |  | 2021-01-09 → 2021-01-10 (+1d) | 16d → 17d | 0d → 15d |  |  |
| 4 | CC Block Manufacture(40X40X40)-5012 Nos |  | 2021-01-09 → 2021-01-10 (+1d) | 16d → 17d | 0d → 15d |  | was named CC Block Manufacture(30X30X30)-39933 Nos |
| 5 | CC Block Manufacture(40X40X20)-33338 Nos |  |  |  | 0d → 16d |  | was named CC Block Manufacture(40X40X20)-8701 Nos |
| 6 | Embankment Construction-6974 cum |  |  |  | 21d → 0d |  | was named Embankment Construction-9880 cum |
| 7 | Placing Sand Filter-560 cum |  |  |  | 21d → 0d |  | was named Placing Sand Filter-601 cum |
| 8 | Placing Geotextile Filter-6098 sqm | 2021-01-25 → 2021-02-05 (+11d) | 2021-02-05 → 2021-02-16 (+11d) |  | 21d → 0d | 6 → 7 | was named Placing Geotextile Filter-6617 sqm |
| 9 | Placing Pea Gravel Filter-560 cum | 2021-01-09 → 2021-02-16 (+38d) | 2021-01-20 → 2021-02-27 (+38d) |  | 18d → 0d | 4 → 8 | was named Placing Pea Gravel Filter-620 cum |
| 10 | Placing CC Block-1388 cum/38350 Nos | 2021-02-10 → 2021-02-27 (+17d) | 2021-02-20 → 2021-03-10 (+18d) |  |  |  | was named Placing CC Block-1492 cum |
| 11 | Ancilary Work for Site Completion-1 LS | 2021-02-20 → 2021-03-11 (+19d) | 2021-03-01 → 2021-03-18 (+17d) |  |  |  |  |
