# FF

How a schedule from MS Project changed from version to version. A marks actual dates.

## Version 1 (saved 2020-10-24)

Note of the change: Resources Schedule

| ID | WBS | Task | Duration | Start | Finish | Predecessors | Total float |
| --- | --- | --- | --- | --- | --- | --- | --- |
| 1 | 1 | **TYPE_A 4500 to 4520 and 4535 to 4555 total 40 meter** | 68d | 2020-12-15 | 2021-03-01 |  | 0d |
| 2 |  | Mobilization and Site Preparation | 7d | 2020-12-15 | 2020-12-22 |  | 0d |
| 3 | 1.2 | **Manufacturing CC Block** | 16d | 2020-12-22 | 2021-01-09 |  | 0d |
| 4 |  | CC Block Manufacture(30X30X30)-39933 Nos | 16d | 2020-12-22 | 2021-01-09 | 2 | 0d |
| 5 |  | CC Block Manufacture(40X40X20)-8701 Nos | 16d | 2020-12-22 | 2021-01-09 | 2 | 0d |
| 6 |  | Embankment Construction-9880 cum | 30d | 2020-12-22 | 2021-01-25 | 2 | 21d |
| 7 |  | Placing Sand Filter-601 cum | 10d | 2021-01-25 | 2021-02-05 | 6 | 21d |
| 8 |  | Placing Geotextile Filter-6617 sqm | 10d | 2021-01-25 | 2021-02-05 | 6 | 21d |
| 9 |  | Placing Pea Gravel Filter-620 cum | 10d | 2021-01-09 | 2021-01-20 | 4 | 18d |
| 10 |  | Placing CC Block-1492 cum | 10d | 2021-02-10 | 2021-02-20 | 9, 4FS+28d, 5FS+28d | 0d |
| 11 |  | Ancilary Work for Site Completion-1 LS | 7d | 2021-02-20 | 2021-03-01 | 10 | 0d |

## Version 2 (saved 2020-11-01)

Note of the change: Resources Schedule 7

Last finish 2021-03-01 → 2021-03-18 (+17d).

Changed:

| ID | Task | Start | Finish | Duration | Total float | Predecessors |
| --- | --- | --- | --- | --- | --- | --- |
| 1 | **TYPE_A 4500 to 4520 and 4535 to 4555 total 40 meter** |  | 2021-03-01 → 2021-03-18 (+17d) | 68d → 84d |  |  |
| 8 | Placing Geotextile Filter-6617 sqm | 2021-01-25 → 2021-02-05 (+11d) | 2021-02-05 → 2021-02-16 (+11d) |  | 21d → 0d | 6 → 7 |
| 9 | Placing Pea Gravel Filter-620 cum | 2021-01-09 → 2021-02-16 (+38d) | 2021-01-20 → 2021-02-27 (+38d) |  | 18d → 0d | 4 → 8 |
| 10 | Placing CC Block-1492 cum | 2021-02-10 → 2021-02-27 (+17d) | 2021-02-20 → 2021-03-10 (+18d) |  |  |  |
| 11 | Ancilary Work for Site Completion-1 LS | 2021-02-20 → 2021-03-11 (+19d) | 2021-03-01 → 2021-03-18 (+17d) |  |  |  |
